# Service_to_building_3014

How a schedule from MS Project changed from version to version. A marks actual dates.

## Version 1 (saved 2010-06-01, file Service_to_building_3014.mpp)

| ID | WBS | Task | Duration | Start | Finish | Predecessors | Complete | Total float | Constraint |
| --- | --- | --- | --- | --- | --- | --- | --- | --- | --- |
| 1 | 1 | **Service to bldg 3014** | 97d | 2010-04-06 A | 2010-08-18 |  | 52% | 0d |  |
| 2 |  | RFP received by DU | 15d | 2010-04-06 A | 2010-04-26 A |  | 100% |  | finish no earlier than 2010-04-26 |
| 3 |  | Design | 26d | 2010-04-27 A | 2010-06-01 | 2 | 50% | 56d |  |
| 4 | 1.3 | **Sign contract / submit NTP** | 10d | 2010-04-27 A | 2010-05-10 A |  | 100% |  |  |
| 5 |  | Complete JIF | 0.25d | 2010-04-27 A | 2010-04-27 A | 2 | 100% |  |  |
| 6 |  | Identify contractor support | 3.75d | 2010-04-27 A | 2010-04-30 A | 5 | 100% |  |  |
| 7 |  | Finalize scope & estimate | 6d | 2010-05-03 A | 2010-05-10 A | 6 | 100% |  |  |
| 8 |  | DU Order materials | 14d | 2010-05-13 A | 2010-06-01 A | 3SS+10d | 100% |  | finish no earlier than 2010-06-01 |
| 9 |  | DU permitting | 2d | 2010-06-02 A | 2010-06-03 A | 3 | 100% |  |  |
| 10 |  | DU construction RFP | 7d | 2010-06-04 A | 2010-06-14 A | 9 | 100% |  |  |
| 11 |  | DU construction Award | 10d | 2010-06-15 A | 2010-06-28 A | 10 | 100% |  |  |
| 12 |  | Construction Mobilization | 3d | 2010-06-29 A | 2010-07-01 | 11 | 50% | 34d |  |
| 13 |  | Contractor submittals | 14d | 2010-06-29 A | 2010-07-16 | 11 | 50% | 23d |  |
| 14 |  | Construction | 30d | 2010-06-29 A | 2010-08-09 | 11, 8 | 10% | 0d |  |
| 15 | 1.11 | **DU project closeout** | 7d | 2010-08-10 | 2010-08-18 | 14 |  | 0d |  |
| 16 |  | Complete commissioning | 7d | 2010-08-10 | 2010-08-18 |  |  | 0d |  |
| 17 |  | Record drawings | 7d | 2010-08-10 | 2010-08-18 |  |  | 0d |  |
| 18 |  | GIS | 7d | 2010-08-10 | 2010-08-18 |  |  | 0d |  |
| 19 |  | O&M | 7d | 2010-08-10 | 2010-08-18 |  |  | 0d |  |

## Version 2 (saved 2010-06-02, file Service_to_bldg_336A.mpp)

Last finish 2010-08-18 → 2010-11-26 (+100d). Complete tasks 8 → 5.

Added:

| ID | Task | Duration | Start | Finish | Predecessors |
| --- | --- | --- | --- | --- | --- |
| 11 | ADEC review/approve | 28d | 2010-06-02 | 2010-07-09 | 3 |

Changed:

| ID | Task | Start | Finish | Duration | Complete | Total float | Predecessors | Other |
| --- | --- | --- | --- | --- | --- | --- | --- | --- |
| 1 | **Service_to_bldg_336A** |  | 2010-08-18 → 2010-11-26 (+100d) | 97d → 169d | 52% → 19% |  |  | was named Service to bldg 3014 |
| 2 | Received RFP |  |  |  |  |  |  | was named RFP received by DU |
| 3 | Design |  |  |  | 50% → 10% | 56d → 0d |  | resources none → Fosdick_&_Hilmer |
| 6 | Identify sub-contractor support |  |  |  |  |  |  | was named Identify contractor support |
| 8 | DU Identify/Order long lead materials |  |  |  |  |  |  | was named DU Order materials |
| 9 | DU construction RFP | 2010-06-04 A → 2010-06-02 A (-2d) | 2010-06-14 A → 2010-06-15 (+1d) | 7d → 10d | 100% → 50% | none → 118d | 10 → 3, 10 |  |
| 10 | DU permitting | 2010-06-02 A → 2010-06-02 | 2010-06-03 A → 2010-06-10 (+7d) | 2d → 7d | 100% → 0% | none → 121d |  |  |
| 12 | DU construction Award | 2010-06-15 A → 2010-07-12 (+27d) | 2010-06-28 A → 2010-07-14 (+16d) | 10d → 3d | 100% → 0% | none → 0d | 9 → 11, 9 |  |
| 13 | Construction Mobilization | 2010-06-29 A → 2010-07-15 (+16d) | 2010-07-01 → 2010-07-19 (+18d) |  | 50% → 0% | 34d → 94d |  |  |
| 14 | Contractor submittals | 2010-06-29 A → 2010-07-15 (+16d) | 2010-07-16 → 2010-07-23 (+7d) | 14d → 7d | 50% → 0% | 23d → 90d |  |  |
| 15 | Construction | 2010-06-29 A → 2010-07-15 (+16d) | 2010-08-09 → 2010-11-17 (+100d) | 30d → 90d | 10% → 0% |  |  |  |
| 16 | **DU project closeout** | 2010-08-10 → 2010-11-18 (+100d) | 2010-08-18 → 2010-11-26 (+100d) |  |  |  |  |  |
| 17 | Complete commissioning | 2010-08-10 → 2010-11-18 (+100d) | 2010-08-18 → 2010-11-26 (+100d) |  |  |  |  |  |
| 18 | Record drawings | 2010-08-10 → 2010-11-18 (+100d) | 2010-08-18 → 2010-11-26 (+100d) |  |  |  |  |  |
| 19 | GIS | 2010-08-10 → 2010-11-18 (+100d) | 2010-08-18 → 2010-11-26 (+100d) |  |  |  |  |  |
| 20 | O&M | 2010-08-10 → 2010-11-18 (+100d) | 2010-08-18 → 2010-11-26 (+100d) |  |  |  |  |  |
